# vms_project

Schedule from MS Project, 2012-02-28 to 2012-11-20, 4 hours a day.

## Calendars

- Standard: Mon-Sun 20:00-23:59.

## Resources

| Resource |
| --- |
| Toàn |
| Long |
| Đức |

## Schedule

| ID | WBS | Task | Type | Duration | Start | Finish | Predecessors | Total slack | Free slack | Constraint | Resources | Work |
| --- | --- | --- | --- | --- | --- | --- | --- | --- | --- | --- | --- | --- |
| 1 | 1 | **Khảo sát** |  | 147.38d | 2012-02-28 | 2012-07-25 |  | 109.82d |  |  |  |  |
| 2 | 1.1 | Khảo sát lần 1 | milestone | 0d | 2012-02-28 | 2012-02-28 |  | 263.87d |  | start no earlier than 2012-02-28 | Toàn; Long |  |
| 3 | 1.2 | Khảo sát lần 2 | milestone | 0d | 2012-03-12 | 2012-03-12 |  | 250.92d |  | start no earlier than 2012-03-12 | Toàn; Long |  |
| 4 | 1.3 | Khảo sát lần 3 | milestone | 0d | 2012-07-12 | 2012-07-12 |  | 129.43d |  | start no earlier than 2012-07-12 | Toàn; Long |  |
| 5 | 1.4 | Khảo sát lần 4 | milestone | 0d | 2012-07-25 | 2012-07-25 |  | 116.48d |  | start no earlier than 2012-07-25 | Toàn; Long |  |
| 6 | 2 | Phân tích yêu cầu | milestone | 0d | 2012-07-30 | 2012-07-30 |  | 111.5d |  | start no earlier than 2012-07-30 | Toàn; Long |  |
| 7 | 3 | Viết tài liệu mô tả yêu cầu | milestone | 0d | 2012-07-30 | 2012-07-30 |  | 111.5d |  | start no earlier than 2012-07-30 | Toàn; Long |  |
| 8 | 4 | Thiết kế giao diện | milestone | 0d | 2012-07-25 | 2012-07-25 |  | 116.48d |  | start no earlier than 2012-07-25 | Toàn; Long |  |
| 9 | 5 | Thiết kế use case | milestone | 0d | 2012-08-03 | 2012-08-03 |  | 107.52d | 0d | start no earlier than 2012-08-03 | Toàn |  |
| 10 | 6 | Thiết kế database | milestone | 0d | 2012-08-03 | 2012-08-03 | 9 | 100.85d |  |  | Long |  |
| 11 | 7 | Lên kế hoạch công việc | milestone | 0d | 2012-09-07 | 2012-09-07 |  | 72.67d |  |  | Toàn |  |
| 12 | 8 | **Training** |  | 0d | 2012-09-07 | 2012-09-07 |  | 66d |  |  |  |  |
| 13 | 8.1 | Training nghiệp vụ | milestone | 0d | 2012-09-07 | 2012-09-07 |  | 72.67d |  |  | Toàn |  |
| 14 | 8.2 | Training framework | milestone | 0d | 2012-09-07 | 2012-09-07 |  | 72.67d |  |  | Long |  |
| 15 | 9 | **Code** |  | 74d | 2012-09-07 | 2012-11-20 |  | 0d |  |  |  | 784h |
| 16 | 9.1 | **Giai đoạn 1** |  | 35d | 2012-09-07 | 2012-10-12 |  | 0d |  |  |  | 364h |
| 17 | 9.1.1 | Tạo giao diện chính | milestone | 0d | 2012-09-07 | 2012-09-07 |  | 72.67d |  |  | Long; Đức |  |
| 18 | 9.1.2 | Quản lý người dùng | milestone | 0d | 2012-09-07 | 2012-09-07 |  | 72.67d |  |  | Đức |  |
| 19 | 9.1.3 | Phân quyền người dùng | milestone | 0d | 2012-09-07 | 2012-09-07 |  | 72.67d |  |  | Đức |  |
| 20 | 9.1.4 | **Quản lý danh mục** |  | 8d | 2012-09-07 | 2012-09-15 |  | 2d |  |  |  | 32h |
| 21 | 9.1.4.1 | Danh mục phòng ban |  | 1d | 2012-09-07 | 2012-09-08 |  | 2d | 0d | start no earlier than 2012-09-07 | Đức | 4h |
| 22 | 9.1.4.2 | Danh mục loại giao tiếp |  | 1d | 2012-09-08 | 2012-09-09 | 21 | 2d | 0d |  | Đức | 4h |
| 23 | 9.1.4.3 | Danh mục cách tính cước |  | 1d | 2012-09-09 | 2012-09-10 | 22 | 2d | 0d |  | Đức | 4h |
| 24 | 9.1.4.4 | Danh mục đối tác |  | 1d | 2012-09-10 | 2012-09-11 | 23 | 2d | 0d |  | Đức | 4h |
| 25 | 9.1.4.5 | Danh mục tiêu chuẩn bàn giao kênh |  | 1d | 2012-09-11 | 2012-09-12 | 24 | 2d | 0d |  | Đức | 4h |
| 26 | 9.1.4.6 | Danh mục dự án |  | 1d | 2012-09-12 | 2012-09-13 | 25 | 2d | 0d |  | Đức | 4h |
| 27 | 9.1.4.7 | Danh mục khu vực |  | 1d | 2012-09-13 | 2012-09-14 | 26 | 2d | 0d |  | Đức | 4h |
| 28 | 9.1.4.8 | Viết tài liệu mô tả, chú ý những chỗ đặc biệt |  | 1d | 2012-09-14 | 2012-09-15 | 27 | 2d | 0d |  | Đức | 4h |

| ID | WBS | Task | Duration | Start | Finish | Predecessors | Total slack | Free slack | Constraint | Resources | Work |
| --- | --- | --- | --- | --- | --- | --- | --- | --- | --- | --- | --- |
| 29 | 9.1.5 | **Quản lý tuyến kênh** | 22d | 2012-09-07 | 2012-09-29 |  | 0d |  |  |  | 88h |
| 30 | 9.1.5.1 | Tìm kiếm | 3d | 2012-09-07 | 2012-09-10 |  | 0d |  |  | Long | 12h |
| 31 | 9.1.5.2 | Thêm | 3d | 2012-09-10 | 2012-09-13 | 30 | 0d |  |  | Long | 12h |
| 32 | 9.1.5.3 | Xóa | 1d | 2012-09-13 | 2012-09-14 | 31 | 0d |  |  | Long | 4h |
| 33 | 9.1.5.4 | Sửa | 2d | 2012-09-14 | 2012-09-16 | 32 | 0d |  |  | Long | 8h |
| 34 | 9.1.5.5 | Xem chi tiết | 2d | 2012-09-16 | 2012-09-18 | 33 | 0d |  |  | Long | 8h |
| 35 | 9.1.5.6 | Import | 5d | 2012-09-18 | 2012-09-23 | 34 | 0d |  |  | Long | 20h |
| 36 | 9.1.5.7 | Export | 2d | 2012-09-23 | 2012-09-25 | 35 | 0d |  |  | Long | 8h |
| 37 | 9.1.5.8 | Form tìm kiếm tuyến kênh sử dụng chung | 3d | 2012-09-25 | 2012-09-28 | 36 | 0d |  |  | Long | 12h |
| 38 | 9.1.5.9 | Viết tài liệu mô tả, chú ý những chỗ đặc biệt | 1d | 2012-09-28 | 2012-09-29 | 37 | 0d |  |  | Long | 4h |
| 39 | 9.1.6 | **Quản lý tiến độ bàn giao kênh** | 6d | 2012-09-29 | 2012-10-05 |  | 0d |  |  |  | 24h |
| 40 | 9.1.6.1 | Tìm kiếm | 3d | 2012-09-29 | 2012-10-02 | 38 | 0d |  | start no earlier than 2012-08-07 | Long | 12h |
| 41 | 9.1.6.2 | Cập nhật tiến độ bàn giao kênh | 2d | 2012-10-02 | 2012-10-04 | 40 | 0d |  |  | Long | 8h |
| 42 | 9.1.6.3 | Viết tài liệu mô tả, chú ý những chỗ đặc biệt | 1d | 2012-10-04 | 2012-10-05 | 41 | 0d |  |  | Long | 4h |
| 43 | 9.1.7 | **Quản lý sự cố** | 12d | 2012-09-07 | 2012-09-19 |  | 11d |  |  |  | 48h |
| 44 | 9.1.7.1 | Tìm kiếm | 1d | 2012-09-07 | 2012-09-08 |  | 11d | 0d |  | Toàn | 4h |
| 45 | 9.1.7.2 | Thêm | 1d | 2012-09-08 | 2012-09-09 | 44 | 11d | 0d |  | Toàn | 4h |
| 46 | 9.1.7.3 | Xóa | 1d | 2012-09-09 | 2012-09-10 | 45 | 11d | 0d |  | Toàn | 4h |
| 47 | 9.1.7.4 | Sửa | 1d | 2012-09-10 | 2012-09-11 | 46 | 11d | 0d |  | Toàn | 4h |
| 48 | 9.1.7.5 | Import | 3d | 2012-09-11 | 2012-09-14 | 47 | 11d | 0d |  | Toàn | 12h |
| 49 | 9.1.7.6 | Export | 1d | 2012-09-14 | 2012-09-15 | 48 | 11d | 0d |  | Toàn | 4h |
| 50 | 9.1.7.7 | Xem chi tiết | 1d | 2012-09-15 | 2012-09-16 | 49 | 11d | 0d |  | Toàn | 4h |
| 51 | 9.1.7.8 | Màn hình tìm kiếm sự cố dùng chung | 2d | 2012-09-16 | 2012-09-18 | 50 | 11d | 0d |  | Toàn | 8h |
| 52 | 9.1.7.9 | Viết tài liệu mô tả, chú ý những chỗ đặc biệt | 1d | 2012-09-18 | 2012-09-19 | 51 | 11d | 0d |  | Toàn | 4h |

| ID | WBS | Task | Duration | Start | Finish | Predecessors | Total slack | Free slack | Resources | Work |
| --- | --- | --- | --- | --- | --- | --- | --- | --- | --- | --- |
| 53 | 9.1.8 | **Quản lý văn bản đề xuất** | 9d | 2012-09-15 | 2012-09-24 |  | 2d |  |  | 36h |
| 54 | 9.1.8.1 | Tìm kiếm | 1d | 2012-09-15 | 2012-09-16 | 28 | 2d | 0d | Đức | 4h |
| 55 | 9.1.8.2 | Thêm | 3d | 2012-09-16 | 2012-09-19 | 54 | 2d | 0d | Đức | 12h |
| 56 | 9.1.8.3 | Xóa | 1d | 2012-09-19 | 2012-09-20 | 55 | 2d | 0d | Đức | 4h |
| 57 | 9.1.8.4 | Sửa | 2d | 2012-09-20 | 2012-09-22 | 56 | 2d | 0d | Đức | 8h |
| 58 | 9.1.8.5 | Xem chi tiết | 1d | 2012-09-22 | 2012-09-23 | 57 | 2d | 0d | Đức | 4h |
| 59 | 9.1.8.6 | Viết tài liệu mô tả, chú ý những chỗ đặc biệt | 1d | 2012-09-23 | 2012-09-24 | 58 | 2d | 0d | Đức | 4h |
| 60 | 9.1.9 | **Quản lý biên bản bàn giao kênh** | 9d | 2012-09-24 | 2012-10-03 |  | 2d |  |  | 36h |
| 61 | 9.1.9.1 | Tìm kiếm | 1d | 2012-09-24 | 2012-09-25 | 59 | 2d | 0d | Đức | 4h |
| 62 | 9.1.9.2 | Thêm | 3d | 2012-09-25 | 2012-09-28 | 61 | 2d | 0d | Đức | 12h |
| 63 | 9.1.9.3 | Xóa | 1d | 2012-09-28 | 2012-09-29 | 62 | 2d | 0d | Đức | 4h |
| 64 | 9.1.9.4 | Sửa | 2d | 2012-09-29 | 2012-10-01 | 63 | 2d | 0d | Đức | 8h |
| 65 | 9.1.9.5 | Xem chi tiết | 1d | 2012-10-01 | 2012-10-02 | 64 | 2d | 0d | Đức | 4h |
| 66 | 9.1.9.6 | Viết tài liệu mô tả, chú ý những chỗ đặc biệt | 1d | 2012-10-02 | 2012-10-03 | 65 | 2d | 0d | Đức | 4h |
| 67 | 9.1.10 | **Quản lý biên bản vận hành kênh** | 5d | 2012-09-19 | 2012-09-24 |  | 11d |  |  | 20h |
| 68 | 9.1.10.1 | Tìm kiếm | 1d | 2012-09-19 | 2012-09-20 | 52 | 11d | 0d | Toàn | 4h |
| 69 | 9.1.10.2 | Thêm | 1d | 2012-09-20 | 2012-09-21 | 68 | 11d | 0d | Toàn | 4h |
| 70 | 9.1.10.3 | Xóa | 1d | 2012-09-21 | 2012-09-22 | 69 | 11d | 0d | Toàn | 4h |
| 71 | 9.1.10.4 | Sửa | 1d | 2012-09-22 | 2012-09-23 | 70 | 11d | 0d | Toàn | 4h |
| 72 | 9.1.10.5 | Viết tài liệu mô tả, chú ý những chỗ đặc biệt | 1d | 2012-09-23 | 2012-09-24 | 71 | 11d | 0d | Toàn | 4h |
| 73 | 9.1.11 | Test và fix bug giai đoạn 1 | 5d | 2012-10-05 | 2012-10-10 | 72, 66, 42 | 0d |  | Đức; Toàn; Long | 60h |
| 74 | 9.1.12 | Build giai đoạn 1 | 1d | 2012-10-10 | 2012-10-11 | 73 | 0d |  | Đức; Toàn; Long | 12h |
| 75 | 9.1.13 | Demo giai đoạn 1 | 1d | 2012-10-11 | 2012-10-12 | 74 | 0d |  | Toàn; Long | 8h |
| 76 | 9.2 | **Giai đoạn 2** | 49d | 2012-09-24 | 2012-11-12 |  | 0d |  |  | 324h |
| 77 | 9.2.1 | **Quản lý hợp đồng** | 6d | 2012-09-24 | 2012-09-30 |  | 19d |  |  | 24h |
| 78 | 9.2.1.1 | Tìm kiếm | 1d | 2012-09-24 | 2012-09-25 | 72 | 19d | 0d | Toàn | 4h |
| 79 | 9.2.1.2 | Thêm | 1d | 2012-09-25 | 2012-09-26 | 78 | 19d | 0d | Toàn | 4h |
| 80 | 9.2.1.3 | Xóa | 1d | 2012-09-26 | 2012-09-27 | 79 | 19d | 0d | Toàn | 4h |
| 81 | 9.2.1.4 | Sửa | 1d | 2012-09-27 | 2012-09-28 | 80 | 19d | 0d | Toàn | 4h |
| 82 | 9.2.1.5 | Xem chi tiết | 1d | 2012-09-28 | 2012-09-29 | 81 | 19d | 0d | Toàn | 4h |
| 83 | 9.2.1.6 | Viết tài liệu mô tả, chú ý những chỗ đặc biệt | 1d | 2012-09-29 | 2012-09-30 | 82 | 19d | 0d | Toàn | 4h |

| ID | WBS | Task | Duration | Start | Finish | Predecessors | Total slack | Free slack | Constraint | Resources | Work |
| --- | --- | --- | --- | --- | --- | --- | --- | --- | --- | --- | --- |
| 84 | 9.2.2 | **Quản lý phụ lục hợp đồng** | 16.98d | 2012-10-03 | 2012-10-20 |  | 2.02d |  |  |  | 48h |
| 85 | 9.2.2.1 | Tính giá trị phụ lục | 4d | 2012-10-03 | 2012-10-12 | 66 | 2.02d | 0d |  | Đức | 16h |
| 86 | 9.2.2.2 | Thêm | 3d | 2012-10-12 | 2012-10-15 | 85 | 2.02d | 0d |  | Đức | 12h |
| 87 | 9.2.2.3 | Xóa | 1d | 2012-10-15 | 2012-10-16 | 86 | 2.02d | 0d |  | Đức | 4h |
| 88 | 9.2.2.4 | Sửa | 2d | 2012-10-16 | 2012-10-18 | 87 | 2.02d | 0d |  | Đức | 8h |
| 89 | 9.2.2.5 | Tìm kiếm | 1d | 2012-10-18 | 2012-10-19 | 88 | 2.02d | 0d |  | Đức | 4h |
| 90 | 9.2.2.6 | Viết tài liệu mô tả, chú ý những chỗ đặc biệt | 1d | 2012-10-19 | 2012-10-20 | 89 | 2.02d | 0d |  | Đức | 4h |
| 91 | 9.2.3 | **Quản lý hồ sơ thanh toán** | 18d | 2012-09-30 | 2012-10-18 |  | 7d |  |  |  | 52h |
| 92 | 9.2.3.1 | Kê khai hồ sơ thanh toán | 3d | 2012-09-30 | 2012-10-03 | 83 | 19d | 0d |  | Toàn | 12h |
| 93 | 9.2.3.2 | Tìm kiếm | 1d | 2012-10-03 | 2012-10-04 | 92 | 19d | 0d |  | Toàn | 4h |
| 94 | 9.2.3.3 | Xóa | 1d | 2012-10-04 | 2012-10-05 | 93 | 19d | 7d | start no earlier than 2012-10-04 | Toàn | 4h |
| 95 | 9.2.3.4 | Sửa | 1d | 2012-10-12 | 2012-10-13 | 94, 75 | 12d | 0d |  | Toàn | 4h |
| 96 | 9.2.3.5 | Link với web thanh toán | 5d | 2012-10-12 | 2012-10-17 | 75 | 0d |  |  | Long | 20h |
| 97 | 9.2.3.6 | Viết tài liệu mô tả, chú ý những chỗ đặc biệt | 1d | 2012-10-17 | 2012-10-18 | 96 | 0d |  |  | Toàn; Long | 8h |
| 98 | 9.2.4 | **Báo cáo** | 24d | 2012-10-13 | 2012-11-06 |  | 0d |  |  |  | 128h |
| 99 | 9.2.4.1 | **Báo cáo tiến độ** | 7d | 2012-10-18 | 2012-10-25 |  | 0d |  |  |  | 40h |
| 100 | 9.2.4.1.1 | Store database | 6d | 2012-10-18 | 2012-10-24 | 97 | 0d |  |  | Long | 24h |
| 101 | 9.2.4.1.2 | Giao diện | 2d | 2012-10-20 | 2012-10-22 | 90 | 2.02d | 0d |  | Đức | 8h |
| 102 | 9.2.4.1.3 | Viết tài liệu mô tả, chú ý những chỗ đặc biệt | 1d | 2012-10-24 | 2012-10-25 | 101, 100 | 0d |  |  | Đức; Long | 8h |
| 103 | 9.2.4.2 | **Xuất bảng đối soát cước** | 16d | 2012-10-13 | 2012-10-29 |  | 0d |  |  |  | 32h |
| 104 | 9.2.4.2.1 | Store database | 3d | 2012-10-25 | 2012-10-28 | 102 | 0d |  |  | Long | 12h |
| 105 | 9.2.4.2.2 | Giao diện | 3d | 2012-10-13 | 2012-10-16 | 95 | 12d |  |  | Toàn | 12h |
| 106 | 9.2.4.2.3 | Viết tài liệu mô tả, chú ý những chỗ đặc biệt | 1d | 2012-10-28 | 2012-10-29 | 104, 105 | 0d |  |  | Long; Toàn | 8h |
| 107 | 9.2.4.3 | **Báo cáo giảm trừ mất liên lạc** | 11.02d | 2012-10-22 | 2012-11-02 |  | 0d |  |  |  | 28h |
| 108 | 9.2.4.3.1 | Store databse | 3d | 2012-10-29 | 2012-11-01 | 106 | 0d |  |  | Long | 12h |
| 109 | 9.2.4.3.2 | Giao diện | 2d | 2012-10-22 | 2012-10-24 | 101 | -3.02d | 0d |  | Đức | 8h |
| 110 | 9.2.4.3.3 | Viết tài liệu mô tả, chú ý những chỗ đặc biệt | 1d | 2012-11-01 | 2012-11-02 | 108, 109 | 0d |  |  | Long; Đức | 8h |

| ID | WBS | Task | Duration | Start | Finish | Predecessors | Total slack | Free slack | Constraint | Resources | Work |
| --- | --- | --- | --- | --- | --- | --- | --- | --- | --- | --- | --- |
| 111 | 9.2.4.4 | **Báo cáo sự cố theo thời gian** | 13.02d | 2012-10-24 | 2012-11-06 |  | 0d |  |  |  | 28h |
| 112 | 9.2.4.4.1 | Store databse | 3d | 2012-11-02 | 2012-11-05 | 110 | 0d |  |  | Long | 12h |
| 113 | 9.2.4.4.2 | Giao diện | 2d | 2012-10-24 | 2012-11-02 | 109 | -3.02d | 0d |  | Đức | 8h |
| 114 | 9.2.4.4.3 | Viết tài liệu mô tả, chú ý những chỗ đặc biệt | 1d | 2012-11-05 | 2012-11-06 | 113, 112 | 0d |  |  | Long; Đức | 8h |
| 115 | 9.2.5 | Test và fix bug giai đoạn 2 | 5d | 2012-11-06 | 2012-11-11 | 114, 105 | 0d |  |  | Long; Toàn; Đức | 60h |
| 116 | 9.2.6 | Demo giai đoạn 2 | 1d | 2012-11-11 | 2012-11-12 | 115 | 0d |  |  | Long; Toàn; Đức | 12h |
| 117 | 9.3 | Test và fix bug cả hai giai đoạn trong lúc chờ ý kiến phản hồi của khách hàng | 5d | 2012-11-12 | 2012-11-17 | 116, 75 | 0d |  |  | Long; Toàn; Đức | 60h |
| 118 | 9.4 | Viết tài liệu hướng dẫn sử dụng | 3d | 2012-11-17 | 2012-11-20 | 117 | 0d |  | start no earlier than 2012-10-12 | Toàn; Long; Đức | 36h |
